# طراحی و توسعه سامانه مدیریت یادگیری هوشمند

Schedule from MS Project XML, 2026-09-23 to 2027-03-07.
هوشمند آذین بازار الماس (Ymax)

## Calendars

- Standard: Mon-Wed 08:00-17:00; Thu off; Fri 08:00-17:00; Sat as the base calendar; Sun 08:00-17:00.

## Resources

| Resource |
| --- |
| تیم Ymax |

## Schedule

| ID | WBS | Task | Type | Duration | Start | Finish | Predecessors |
| --- | --- | --- | --- | --- | --- | --- | --- |
| 1 | 1 | **فاز ۱: هسته + استاندارد** |  |  | 2026-09-23 | 2026-12-12 |  |
| 2 | 1.1 | P1-01: تحلیل و طراحی معماری |  | 15d | 2026-09-23 | 2026-10-08 |  |
| 3 | 1.2 | P1-02: مدیریت هویت و دسترسی (Auth) |  | 20d | 2026-10-08 | 2026-10-28 | 2 |
| 4 | 1.3 | P1-03: ساختار محتوا و دوره (Course Entity) |  | 20d | 2026-10-08 | 2026-10-28 | 2 |
| 5 | 1.4 | P1-04: زیرساخت ایونت (Event Bus) |  | 15d | 2026-10-08 | 2026-10-23 | 2 |
| 6 | 1.5 | P1-05: تنظیمات و هسته مرکزی (Plugin Loader) |  | 15d | 2026-10-08 | 2026-10-23 | 2 |
| 7 | 1.6 | P1-06: موتور محتوا (Content Delivery) |  | 20d | 2026-10-28 | 2026-11-17 | 4 |
| 8 | 1.7 | P1-07: سیستم ارزیابی (Assessment) |  | 20d | 2026-10-28 | 2026-11-17 | 4 |
| 9 | 1.8 | P1-08: صدور گواهی (Certification) |  | 15d | 2026-10-28 | 2026-11-12 | 4 |
| 10 | 1.9 | P1-09: داشبورد تعاملی |  | 15d | 2026-10-28 | 2026-11-12 | 3 |
| 11 | 1.10 | P1-10: ساختار سازمانی (Hierarchy + RBAC) |  | 20d | 2026-10-28 | 2026-11-17 | 3 |
| 12 | 1.11 | P1-11: مسیر یادگیری و شایستگی |  | 20d | 2026-11-17 | 2026-12-07 | 11 |
| 13 | 1.12 | P1-12: گزارش‌دهی و هوش تجاری (BI) |  | 20d | 2026-11-17 | 2026-12-07 | 11 |
| 14 | 1.13 | P1-13: یکپارچگی HRIS |  | 20d | 2026-11-17 | 2026-12-07 | 11 |
| 15 | 1.14 | P1-14: ساختار ترمیک و تقویم آموزشی |  | 20d | 2026-10-28 | 2026-11-17 | 3 |
| 16 | 1.15 | P1-15: مدیریت فرایندهای درسی (Rules Engine) |  | 20d | 2026-11-17 | 2026-12-07 | 15 |
| 17 | 1.16 | P1-16: ارزیابی و کارنامه |  | 15d | 2026-11-17 | 2026-12-02 | 15 |
| 18 | 1.17 | P1-17: یکپارچگی SIS (گلستان/سجاد) |  | 25d | 2026-11-17 | 2026-12-12 | 15 |
| 19 | 1.18 | M1: تحویل فاز ۱ — MVP | milestone | 0d | 2026-12-12 | 2026-12-12 | 18 |
| 20 | 2 | P2-01: موتور امتیازدهی (Point Engine) |  |  |  |  |  |
| 21 | 3 | **فاز ۲: هوشمند + تست** |  |  | 2026-12-12 | 2027-03-07 |  |
| 22 | 3.1 | P2-01: موتور امتیازدهی (Point Engine) |  | 15d | 2026-12-12 | 2026-12-27 | 21 |
| 23 | 3.2 | P2-02: سیستم نشان و دستاورد (Badge) |  | 15d | 2026-12-27 | 2027-01-11 | 22 |
| 24 | 3.3 | P2-03: سطح‌بندی و لیدربورد |  | 15d | 2026-12-27 | 2027-01-11 | 22 |
| 25 | 3.4 | P2-04: قوانین پاداش و شخصی‌سازی |  | 15d | 2026-12-27 | 2027-01-11 | 22 |
| 26 | 3.5 | P2-05: داشبورد و اعلان‌های هوشمند |  | 15d | 2027-01-11 | 2027-01-26 | 24 |
| 27 | 3.6 | P2-06: ضدتقلب و کنترل سوءاستفاده |  | 10d | 2026-12-27 | 2027-01-06 | 22 |
| 28 | 3.7 | P2-07: موتور پیشنهاددهی (Recommender) |  | 20d | 2026-12-12 | 2027-01-01 | 21 |
| 29 | 3.8 | P2-08: تحلیل شکاف مهارتی (Skill-Gap) |  | 15d | 2027-01-01 | 2027-01-16 | 28 |
| 30 | 3.9 | P2-09: پشتیبانی هوشمند (AI Tutor/Chatbot) |  | 25d | 2026-12-12 | 2027-01-06 | 21 |
| 31 | 3.10 | P2-10: تشخیص تقلب (Proctoring) |  | 20d | 2026-12-12 | 2027-01-01 | 21 |
| 32 | 3.11 | P2-11: داشبورد پیش‌بینی (Predictive) |  | 15d | 2027-01-01 | 2027-01-16 | 28 |
| 33 | 3.12 | P2-12: مدیریت کمیسیون و تسویه حساب |  | 15d | 2026-12-12 | 2026-12-27 | 21 |
| 34 | 3.13 | P2-13: گزارشات فروش و کوپن تخفیف |  | 15d | 2026-12-27 | 2027-01-11 | 33 |
| 35 | 3.14 | P2-14: امتیازدهی، سبد خرید و پرداخت |  | 20d | 2026-12-27 | 2027-01-16 | 33 |
| 36 | 3.15 | P2-15: جلسات Live و ابزارهای پشتیبانی |  | 15d | 2026-12-27 | 2027-01-11 | 33 |
| 37 | 3.16 | P2-16: تست یکپارچگی (Integration Testing) |  | 20d | 2027-01-16 | 2027-02-05 | 36, 32, 27 |
| 38 | 3.17 | P2-17: تست کاربر (UAT) و رفع اشکال |  | 20d | 2027-02-05 | 2027-02-25 | 37 |
| 39 | 3.18 | P2-18: استقرار و راه‌اندازی نهایی |  | 10d | 2027-02-25 | 2027-03-07 | 38 |
| 40 | 3.19 | M2: تحویل نهایی پروژه | milestone | 0d | 2027-03-07 | 2027-03-07 | 39 |
